Schedule from MS Project, 2021-08-16 to 2022-03-29, costs in $.

## Calendars

- Standard: Mon-Fri 08:00-12:00, 13:00-17:00; Sat-Sun off.

## Resources

| Resource | Rate |
| --- | --- |
| Tae | 100 |
| Mark | 100 |
| Ice | 100 |
| Advisor |  |

## Schedule

| ID | WBS | Task | Duration | Start | Finish | Predecessors | Baseline start | Baseline finish | Baseline duration | Total slack | Free slack | Resources | Work | Cost |
| --- | --- | --- | --- | --- | --- | --- | --- | --- | --- | --- | --- | --- | --- | --- |
| 1 | 1 | **Requirement** | 3d | 2021-08-16 | 2021-08-19 |  |  |  |  |  |  |  | 72h | 7,200 |
| 2 | 1.1 | สรุป Requirement ที่ต้องทำจาก CEPP 2563 | 3d | 2021-08-16 | 2021-08-19 |  |  |  |  | 85.88d | 0d | Tae; Mark; Ice | 72h | 7,200 |
| 3 | 2 | **การออกแบบ** | 42d | 2021-08-19 | 2021-10-15 | 1 | 2021-08-15 | 2009-10-12 | 1d? |  |  |  | 600h | 60,000 |
| 4 | 2.1 | **Diagram** | 17d | 2021-08-19 | 2021-09-13 |  |  |  |  | 85.88d |  |  | 408h | 40,800 |
| 5 | 2.1.1 | Use Case | 1d | 2021-08-19 | 2021-08-20 | 2 |  |  |  | 85.88d | 0d | Tae; Mark; Ice | 24h | 2,400 |
| 6 | 2.1.2 | Data Model | 7d | 2021-08-20 | 2021-08-31 | 5 |  |  |  | 85.88d | 0d | Tae; Mark; Ice | 168h | 16,800 |
| 7 | 2.1.3 | Sequence | 3d | 2021-08-31 | 2021-09-03 | 6 |  |  |  | 85.88d | 0d | Tae; Mark; Ice | 72h | 7,200 |
| 8 | 2.1.4 | Deployment | 1d | 2021-09-03 | 2021-09-06 | 7 |  |  |  | 85.88d | 0d | Tae; Mark; Ice | 24h | 2,400 |
| 9 | 2.1.5 | Microservice Deployment | 5d | 2021-09-06 | 2021-09-13 | 8 |  |  |  | 85.88d | 0d | Tae; Mark; Ice | 120h | 12,000 |
| 10 | 2.2 | **API Modules Design** | 24d | 2021-09-13 | 2021-10-15 |  |  |  |  | 85.88d |  |  | 192h | 19,200 |
| 11 | 2.2.1 | **ผู้เล่น** | 13d | 2021-09-13 | 2021-09-30 |  |  |  |  | 85.88d |  |  | 104h | 10,400 |
| 12 | 2.2.1.1 | การสมัครสมาชิก | 1d | 2021-09-13 | 2021-09-14 | 9 |  |  |  | 85.88d | 0d | Mark | 8h | 800 |
| 13 | 2.2.1.2 | การเพิ่มระดับสมาชิก | 1d | 2021-09-14 | 2021-09-15 | 12 |  |  |  | 85.88d | 0d | Mark | 8h | 800 |
| 14 | 2.2.1.3 | การเข้าสู่ระบบ | 1d | 2021-09-15 | 2021-09-16 | 13 |  |  |  | 85.88d | 0d | Mark | 8h | 800 |
| 15 | 2.2.1.4 | การแก้ไขรายละเอียดสมาชิก | 1d | 2021-09-16 | 2021-09-17 | 14 |  |  |  | 85.88d | 0d | Mark | 8h | 800 |
| 16 | 2.2.1.5 | การตั้งค่ารูปแบบหน้าจอ | 1d | 2021-09-17 | 2021-09-20 | 15 |  |  |  | 85.88d | 0d | Mark | 8h | 800 |
| 17 | 2.2.1.6 | การรับข้อมูลจากบอร์ดประกาศ | 2d | 2021-09-20 | 2021-09-22 | 16 |  |  |  | 85.88d | 0d | Mark | 16h | 1,600 |
| 18 | 2.2.1.7 | การเติมเงินและการจ่ายเงิน | 2d | 2021-09-22 | 2021-09-24 | 17 |  |  |  | 85.88d | 0d | Mark | 16h | 1,600 |
| 19 | 2.2.1.8 | การเข้าร่วมการแข่งขัน | 1d | 2021-09-24 | 2021-09-27 | 18 |  |  |  | 85.88d | 0d | Mark | 8h | 800 |
| 20 | 2.2.1.9 | การเรียกผู้จัดการการแข่งขัน | 1d | 2021-09-27 | 2021-09-28 | 19 |  |  |  | 85.88d | 0d | Mark | 8h | 800 |
| 21 | 2.2.1.10 | การดูผลการแข่งขันในปัจจุบัน | 1d | 2021-09-28 | 2021-09-29 | 20 |  |  |  | 85.88d | 0d | Mark | 8h | 800 |
| 22 | 2.2.1.11 | การดูผลการแข่งขันย้อนหลัง | 1d | 2021-09-29 | 2021-09-30 | 21 |  |  |  | 85.88d | 0d | Mark | 8h | 800 |
| 23 | 2.2.2 | **ผู้จัดการการแข่งขัน** | 6d | 2021-09-30 | 2021-10-08 |  |  |  |  | 85.88d |  |  | 48h | 4,800 |
| 24 | 2.2.2.1 | การเข้าสู่ระบบ | 1d | 2021-09-30 | 2021-10-01 | 22 |  |  |  | 85.88d | 0d | Mark | 8h | 800 |
| 25 | 2.2.2.2 | การดูข้อมูลการแข่งขันในปัจจุบัน | 1d | 2021-10-01 | 2021-10-04 | 24 |  |  |  | 85.88d | 0d | Mark | 8h | 800 |
| 26 | 2.2.2.3 | การสร้างรายการแข่งขัน | 1d | 2021-10-04 | 2021-10-05 | 25 |  |  |  | 85.88d | 0d | Mark | 8h | 800 |
| 27 | 2.2.2.4 | การแก้ไขรายละเอียดรายการแข่งขัน | 1d | 2021-10-05 | 2021-10-06 | 26 |  |  |  | 85.88d | 0d | Mark | 8h | 800 |
| 28 | 2.2.2.5 | การยกเลิกรายการแข่งขัน | 1d | 2021-10-06 | 2021-10-07 | 27 |  |  |  | 85.88d | 0d | Mark | 8h | 800 |
| 29 | 2.2.2.6 | การพิมพ์ผลลัพธ์การแข่ง | 1d | 2021-10-07 | 2021-10-08 | 28 |  |  |  | 85.88d | 0d | Mark | 8h | 800 |

| ID | WBS | Task | Duration | Start | Finish | Predecessors | Baseline start | Baseline finish | Baseline duration | Total slack | Free slack | Resources | Work | Cost |
| --- | --- | --- | --- | --- | --- | --- | --- | --- | --- | --- | --- | --- | --- | --- |
| 30 | 2.2.3 | **ผู้ดูแลระบบ** | 5d | 2021-10-08 | 2021-10-15 |  |  |  |  | 85.88d |  |  | 40h | 4,000 |
| 31 | 2.2.3.1 | การเข้าสู่ระบบ | 1d | 2021-10-08 | 2021-10-11 | 29 |  |  |  | 85.88d | 0d | Mark | 8h | 800 |
| 32 | 2.2.3.2 | การลงบอร์ดประกาศ | 1d | 2021-10-11 | 2021-10-12 | 31 |  |  |  | 85.88d | 0d | Mark | 8h | 800 |
| 33 | 2.2.3.3 | การจัดการสมาชิก | 1d | 2021-10-12 | 2021-10-13 | 32 |  |  |  | 85.88d | 0d | Mark | 8h | 800 |
| 34 | 2.2.3.4 | การจัดการเรื่องเงิน | 1d | 2021-10-13 | 2021-10-14 | 33 |  |  |  | 85.88d | 0d | Mark | 8h | 800 |
| 35 | 2.2.3.5 | การสำรองข้อมูล | 1d | 2021-10-14 | 2021-10-15 | 34 |  |  |  | 85.88d |  | Mark | 8h | 800 |
| 36 | 2.3 | **ออกแบบหน้า UI** | 22d | 2021-09-13 | 2021-10-13 |  |  |  |  | 87.88d |  |  |  |  |
| 37 | 2.3.1 | **ผู้เล่น** | 22d | 2021-09-13 | 2021-10-13 |  |  |  |  | 87.88d |  |  |  |  |
| 38 | 2.3.1.1 | หน้าเข้าสู่ระบบ | 2d | 2021-09-13 | 2021-09-15 | 9 |  |  |  | 87.88d | 0d |  |  |  |
| 39 | 2.3.1.2 | หน้าสมัครสมาชิก | 2d | 2021-09-15 | 2021-09-17 | 38 | 2021-08-15 | 2009-10-12 | 1d? | 87.88d | 0d |  |  |  |
| 40 | 2.3.1.3 | หน้ารายละเอียดสมาชิก | 2d | 2021-09-17 | 2021-09-21 | 39 |  |  |  | 87.88d | 0d |  |  |  |
| 41 | 2.3.1.4 | หน้าการตั้งค่ารูปแบบหน้าจอ | 2d | 2021-09-21 | 2021-09-23 | 40 |  |  |  | 87.88d | 0d |  |  |  |
| 42 | 2.3.1.5 | หน้าการเติมเงิน | 2d | 2021-09-23 | 2021-09-27 | 41 |  |  |  | 87.88d | 0d |  |  |  |
| 43 | 2.3.1.6 | หน้า Home | 2d | 2021-09-27 | 2021-09-29 | 42 |  |  |  | 87.88d | 0d |  |  |  |
| 44 | 2.3.1.7 | หน้าการแข่งขัน | 2d | 2021-09-29 | 2021-10-01 | 43 |  |  |  | 87.88d | 0d |  |  |  |
| 45 | 2.3.1.8 | หน้าเรียกกรรมการ | 2d | 2021-10-01 | 2021-10-05 | 44 |  |  |  | 87.88d | 0d |  |  |  |
| 46 | 2.3.1.9 | หน้าการแสดงคะแนน | 2d | 2021-10-05 | 2021-10-07 | 45 |  |  |  | 87.88d | 0d |  |  |  |
| 47 | 2.3.1.10 | หน้าผลการแข่งขันปัจจุบัน | 2d | 2021-10-07 | 2021-10-11 | 46 |  |  |  | 87.88d | 0d |  |  |  |
| 48 | 2.3.1.11 | หน้าผลการแข่งขันย้อนหลัง | 2d | 2021-10-11 | 2021-10-13 | 47 |  |  |  | 87.88d |  |  |  |  |
| 49 | 2.3.2 | **ผู้จัดการการแข่งขัน** | 12d | 2021-09-13 | 2021-09-29 |  |  |  |  | 97.88d |  |  |  |  |
| 50 | 2.3.2.1 | หน้าเข้าสู่ระบบ | 2d | 2021-09-13 | 2021-09-15 | 9 |  |  |  | 97.88d | 0d |  |  |  |
| 51 | 2.3.2.2 | หน้าดูข้อมูลการแข่งขันในปัจจุบัน | 2d | 2021-09-15 | 2021-09-17 | 50 |  |  |  | 97.88d | 0d |  |  |  |
| 52 | 2.3.2.3 | หน้าสร้างรายการแข่งขัน | 2d | 2021-09-17 | 2021-09-21 | 51 |  |  |  | 97.88d | 0d |  |  |  |
| 53 | 2.3.2.4 | หน้าแก้ไขรายละเอียดรายการแข่งขัน | 2d | 2021-09-21 | 2021-09-23 | 52 |  |  |  | 97.88d | 0d |  |  |  |
| 54 | 2.3.2.5 | หน้ายกเลิกรายการแข่งขัน | 2d | 2021-09-23 | 2021-09-27 | 53 |  |  |  | 97.88d | 0d |  |  |  |
| 55 | 2.3.2.6 | หน้าพิมพ์ผลลัพธ์การแข่ง | 2d | 2021-09-27 | 2021-09-29 | 54 |  |  |  | 97.88d |  |  |  |  |

| ID | WBS | Task | Duration | Start | Finish | Predecessors | Baseline start | Baseline finish | Baseline duration | Total slack | Free slack |
| --- | --- | --- | --- | --- | --- | --- | --- | --- | --- | --- | --- |
| 56 | 2.3.3 | **ผู้ดูแลระบบ** | 8d | 2021-09-13 | 2021-09-23 |  |  |  |  | 101.88d |  |
| 57 | 2.3.3.1 | หน้าเข้าสู่ระบบ | 1d | 2021-09-13 | 2021-09-14 | 9 |  |  |  | 101.88d | 0d |
| 58 | 2.3.3.2 | หน้าลงบอร์ดประกาศ | 1d | 2021-09-14 | 2021-09-15 | 57 |  |  |  | 101.88d | 0d |
| 59 | 2.3.3.3 | หน้าจัดการสมาชิก | 2d | 2021-09-15 | 2021-09-17 | 58 |  |  |  | 101.88d | 0d |
| 60 | 2.3.3.4 | หน้าจัดการเรื่องเงิน | 2d | 2021-09-17 | 2021-09-21 | 59 |  |  |  | 101.88d | 0d |
| 61 | 2.3.3.5 | หน้าสำรองข้อมูล | 2d | 2021-09-21 | 2021-09-23 | 60 |  |  |  | 101.88d |  |
| 62 | 3 | **การนำมาใช้** | 75.12d? | 2021-10-18 | 2022-01-28 | 3 | 2021-08-15 | 2009-10-12 | 0d |  |  |
| 63 | 3.1 | **ทำระบบล็อคอิน** | 1d? | 2021-10-18 | 2021-10-18 |  | 2009-10-12 | 2009-10-12 | 1d | 85d | 0d |
| 64 | 3.1.1 | Frontend Dev | 1d? | 2021-10-18 | 2021-10-18 |  |  |  |  | 85d |  |
| 65 | 3.1.2 | **Backend API** | 1d? | 2021-10-18 | 2021-10-18 |  |  |  |  | 85d |  |
| 66 | 3.1.2.1 | Authentication & Authorization | 1d? | 2021-10-18 | 2021-10-18 |  |  |  |  | 85d |  |
| 67 | 3.2 | **ทำระบบสมัครสมาชิก** | 1d? | 2021-10-19 | 2021-10-19 | 63 | 2009-10-12 | 2009-10-12 | 1d | 85d | 0d |
| 68 | 3.2.1 | Frontend Dev | 1d? | 2021-10-19 | 2021-10-19 |  |  |  |  | 85d |  |
| 69 | 3.2.2 | **Backend API** | 1d? | 2021-10-19 | 2021-10-19 |  |  |  |  | 85d |  |
| 70 | 3.2.2.1 | Register user | 1d? | 2021-10-19 | 2021-10-19 |  |  |  |  | 85d |  |
| 71 | 3.2.2.2 | Update user | 1d? | 2021-10-19 | 2021-10-19 |  |  |  |  | 85d |  |
| 72 | 3.3 | **ทำระบบของรูปแบบการแข่งขัน** | 1d? | 2021-10-20 | 2021-10-20 | 67 | 2009-10-12 | 2009-10-12 | 1d | 85d | 0d |
| 73 | 3.3.1 | Frontend Dev | 1d? | 2021-10-20 | 2021-10-20 |  |  |  |  | 85d |  |
| 74 | 3.3.2 | **Backend API** | 1d? | 2021-10-20 | 2021-10-20 |  |  |  |  | 85d |  |
| 75 | 3.3.2.1 | Create tournament | 1d? | 2021-10-20 | 2021-10-20 |  |  |  |  | 85d |  |
| 76 | 3.3.2.2 | Update tournament | 1d? | 2021-10-20 | 2021-10-20 |  |  |  |  | 85d |  |
| 77 | 3.3.2.3 | Delete tournament | 1d? | 2021-10-20 | 2021-10-20 |  |  |  |  | 85d |  |
| 78 | 3.3.2.4 | Join tournament | 1d? | 2021-10-20 | 2021-10-20 |  |  |  |  | 85d |  |
| 79 | 3.3.2.5 | Exit tournament | 1d? | 2021-10-20 | 2021-10-20 |  |  |  |  | 85d |  |
| 80 | 3.3.2.6 | Create team | 1d? | 2021-10-20 | 2021-10-20 |  |  |  |  | 85d |  |
| 81 | 3.3.2.7 | Join team | 1d? | 2021-10-20 | 2021-10-20 |  |  |  |  | 85d |  |
| 82 | 3.3.2.8 | Exit team | 1d? | 2021-10-20 | 2021-10-20 |  |  |  |  | 85d |  |
| 83 | 3.3.2.9 | Manage competitive | 1d? | 2021-10-20 | 2021-10-20 |  |  |  |  | 85d |  |

| ID | WBS | Task | Duration | Start | Finish | Predecessors | Baseline start | Baseline finish | Baseline duration | Total slack | Free slack |
| --- | --- | --- | --- | --- | --- | --- | --- | --- | --- | --- | --- |
| 84 | 3.4 | **ทำระบบการแข่งขัน** | 1d? | 2021-10-21 | 2021-10-21 | 72 | 2009-10-12 | 2009-10-12 | 1d | 85d | 0d |
| 85 | 3.4.1 | Frontend Dev | 1d? | 2021-10-21 | 2021-10-21 |  |  |  |  | 85d |  |
| 86 | 3.4.2 | **Backend API** | 1d? | 2021-10-21 | 2021-10-21 |  |  |  |  | 85d |  |
| 87 | 3.4.2.1 | Bidding | 1d? | 2021-10-21 | 2021-10-21 |  |  |  |  | 85d |  |
| 88 | 3.4.2.2 | Deal card | 1d? | 2021-10-21 | 2021-10-21 |  |  |  |  | 85d |  |
| 89 | 3.4.2.3 | Play card | 1d? | 2021-10-21 | 2021-10-21 |  |  |  |  | 85d |  |
| 90 | 3.4.2.4 | Calculate score | 1d? | 2021-10-21 | 2021-10-21 |  |  |  |  | 85d |  |
| 91 | 3.4.2.5 | Ranking score | 1d? | 2021-10-21 | 2021-10-21 |  |  |  |  | 85d |  |
| 92 | 3.4.2.6 | Swap table | 1d? | 2021-10-21 | 2021-10-21 |  |  |  |  | 85d |  |
| 93 | 3.4.2.7 | Swap card | 1d? | 2021-10-21 | 2021-10-21 |  |  |  |  | 85d |  |
| 94 | 3.5 | **ทำระบบการบันทึกคะแนน** | 1d? | 2021-10-22 | 2021-10-22 | 84 | 2009-10-12 | 2009-10-12 | 1d | 85d | 0d |
| 95 | 3.5.1 | Frontend Dev | 1d? | 2021-10-22 | 2021-10-22 |  |  |  |  | 85d |  |
| 96 | 3.5.2 | **Backend API** | 1d? | 2021-10-22 | 2021-10-22 |  |  |  |  | 85d |  |
| 97 | 3.5.2.1 | Save score of tournament | 1d? | 2021-10-22 | 2021-10-22 |  |  |  |  | 85d |  |
| 98 | 3.5.2.2 | Save Ranking of tournament | 1d? | 2021-10-22 | 2021-10-22 |  |  |  |  | 85d |  |
| 99 | 3.5.2.3 | Save card in tournament | 1d? | 2021-10-22 | 2021-10-22 |  |  |  |  | 85d |  |
| 100 | 3.6 | **ทำระบบการค้นหาข้อมูลการแข่งขัน** | 1d? | 2021-10-25 | 2021-10-25 | 94 | 2009-10-12 | 2009-10-12 | 1d | 85d | 0d |
| 101 | 3.6.1 | Frontend Dev | 1d? | 2021-10-25 | 2021-10-25 |  |  |  |  | 85d |  |
| 102 | 3.6.2 | Backend API | 1d? | 2021-10-25 | 2021-10-25 |  |  |  |  | 85d |  |
| 103 | 3.7 | **ทำระบบการชำระเงิน** | 1d? | 2021-10-26 | 2021-10-26 | 100 | 2009-10-12 | 2009-10-12 | 1d | 85d | 0d |
| 104 | 3.7.1 | Frontend Dev | 1d? | 2021-10-26 | 2021-10-26 |  |  |  |  | 85d |  |
| 105 | 3.7.2 | Backend API | 1d? | 2021-10-26 | 2021-10-26 |  |  |  |  | 85d |  |
| 106 | 3.8 | **ทำระบบการสำรองข้อมูล** | 1d? | 2021-10-27 | 2021-10-27 | 103 | 2009-10-12 | 2009-10-12 | 1d | 85d |  |
| 107 | 3.8.1 | Frontend Dev | 1d? | 2021-10-27 | 2021-10-27 |  |  |  |  | 85d |  |
| 108 | 3.8.2 | Backend API | 1d? | 2021-10-27 | 2021-10-27 |  |  |  |  | 85d |  |

| ID | WBS | Task | Duration | Start | Finish | Predecessors | Total slack |
| --- | --- | --- | --- | --- | --- | --- | --- |
| 109 | 4 | **การ Deploy** | 5.12d | 2022-01-31 | 2022-02-04 | 62 |  |
| 110 | 4.1 | Deploy หน้าเว็บ | 2d | 2022-01-31 | 2022-02-01 |  | 18d |
| 111 | 4.2 | Deploy api | 2d | 2022-01-31 | 2022-02-01 |  | 18d |
| 112 | 5 | **การทดสอบ** | 30.12d | 2022-02-07 | 2022-03-18 | 109 |  |
| 113 | 5.1 | การทำ Unit test | 15d | 2022-02-07 | 2022-02-25 |  | 15d |
| 114 | 5.2 | การทดสอบ Performance | 5d | 2022-02-07 | 2022-02-11 |  | 25d |
| 115 | 6 | **การประเมินผล** | 7d | 2022-03-21 | 2022-03-29 | 112 |  |
| 116 | 6.1 | การดูผลตอบรับจากผู้ใช้งานจริง | 7d | 2022-03-21 | 2022-03-29 |  | 0d |
